ID;WBS;Name;Type;Start;Finish;Baseline Finish;% Complete;Deliverables;Resource Names;Notes
1;1;HC Heater control software;Summary;02.11.2026;24.09.2027;24.09.2027;4;;Jane Doe;
2;1.1;M0 Kick-off;Milestone;02.11.2026;02.11.2026;02.11.2026;100;Project manual;Jane Doe;
3;1.2;Software requirements analysis;Task;02.11.2026;18.12.2026;18.12.2026;35;;John Roe;
4;1.3;M1 Requirements baseline;Milestone;18.12.2026;18.12.2026;18.12.2026;0;Software requirements specification;John Roe;Customer gate
5;1.4;Architectural design;Task;07.12.2026;12.02.2027;05.02.2027;0;;John Roe;
6;1.5;M2 Architecture released;Milestone;12.02.2027;12.02.2027;05.02.2027;0;Software component specification;John Roe;Moved one week (CR-0007)
7;1.6;Implementation and unit test;Task;11.01.2027;07.05.2027;07.05.2027;0;;Kim Moe, Lee Noe;
8;1.7;Drop v0.9;Milestone;19.03.2027;19.03.2027;19.03.2027;0;Release;Lee Noe;Internal drop: control path, no NvM
9;1.8;M3 C-sample software;Milestone;07.05.2027;07.05.2027;07.05.2027;0;Software unit test specifications and reports, Release;Jane Doe;Delivered as v1.0 (feature complete)
10;1.9;Integration and qualification support;Task;10.05.2027;24.09.2027;24.09.2027;0;;Max Koe;
11;1.10;M4 SOP release;Milestone;24.09.2027;24.09.2027;24.09.2027;0;Qualification test specification, QA reports, Release;Jane Doe;Delivered as v2.0: all CRs of the SOP scope, all tests passed
